How a schedule from MS Project changed from version to version. A marks actual dates.

## Version 1 (saved 2020-04-17)

Note of the change: v1.0.0

| ID | WBS | Task | Duration | Start | Finish | Predecessors | Total float | Constraint |
| --- | --- | --- | --- | --- | --- | --- | --- | --- |
| 1 |  | 确认甲方文件 | 10d | 2020-03-02 | 2020-03-13 |  | 0d | finish no later than 2020-03-15 |
| 2 | 2 | **项目原型设计** | 12d | 2020-03-16 | 2020-03-31 | 1 | 0d |  |
| 3 |  | 用户界面初步设计 | 3d | 2020-03-16 | 2020-03-18 |  | 5d | start no earlier than 2020-03-16 |
| 4 |  | 数据库初步设计 | 5d | 2020-03-16 | 2020-03-20 |  | 3d |  |
| 5 |  | 后端基础功能开发 | 8d | 2020-03-16 | 2020-03-25 |  | 0d |  |
| 6 |  | 原型整合 | 2d | 2020-03-26 | 2020-03-27 | 3, 4, 5 | 0d |  |
| 7 |  | 原型校对 | 2d | 2020-03-30 | 2020-03-31 | 6 | 0d |  |
| 8 | 3 | **项目整体开发** | 65d? | 2020-04-01 | 2020-06-30 | 2 | 0d | start no earlier than 2020-04-01 |
| 9 |  | 第一次原型修改与需求细化 | 3d? | 2020-04-01 | 2020-04-03 |  | 0d | start no earlier than 2020-04-01 |
| 10 |  | 数据库系统开发 | 15d | 2020-04-06 | 2020-04-24 | 9 | 0d |  |
| 11 |  | 界面设计方案细化 | 15d | 2020-04-06 | 2020-04-24 | 9 | 0d |  |
| 12 |  | 用户子系统实现 | 15d | 2020-04-06 | 2020-04-24 | 9 | 0d |  |
| 13 |  | 数据存储子系统实现 | 15d | 2020-04-06 | 2020-04-24 | 9 | 0d |  |
| 14 |  | 前端页面实现 | 15d | 2020-04-06 | 2020-04-24 | 9 | 0d |  |
| 15 |  | 界面设计方案v1.0 | 2d | 2020-04-27 | 2020-04-28 | 11 | 2d | finish no later than 2020-04-30 |
| 16 |  | 数据库设计文档v1.0 | 2d | 2020-04-27 | 2020-04-28 | 10 | 2d | finish no later than 2020-04-30 |
| 17 |  | 原型整合校对 | 5d | 2020-04-27 | 2020-05-01 | 10, 11, 12, 13, 14 | 0d |  |
| 18 |  | 第二次原型修改与需求更正 | 3d | 2020-05-04 | 2020-05-06 | 17 | 0d |  |
| 19 |  | 数据库设计修正 | 5d | 2020-05-07 | 2020-05-13 | 18 | 13d |  |
| 20 |  | 用户管理子系统实现 | 17d | 2020-05-07 | 2020-05-29 | 18 | 0d |  |
| 21 |  | 界面设计修改 | 7d | 2020-05-07 | 2020-05-15 | 18 | 1d |  |
| 22 |  | 辅助系统实现 | 17d | 2020-05-07 | 2020-05-29 | 18 | 0d |  |
| 23 |  | 前端页面实现 | 10d | 2020-05-18 | 2020-05-29 | 21 | 1d |  |
| 24 |  | 界面设计方案v1.1 | 3d | 2020-05-18 | 2020-05-20 | 21 | 29d |  |
| 25 |  | 数据库设计文档v1.1 | 3d | 2020-05-14 | 2020-05-18 | 19 | 31d |  |
| 26 |  | 原型整合校对 | 5d | 2020-06-01 | 2020-06-05 | 19, 20, 21, 22, 23 | 1d |  |
| 27 |  | 第三次原型修改与需求更正 | 3d | 2020-06-08 | 2020-06-10 | 26 | 1d |  |
| 28 |  | 数据处理子系统实现 | 17d | 2020-06-01 | 2020-06-23 | 20, 22 | 0d | finish no earlier than 2020-06-03 |
| 29 |  | 数据分析子系统实现 | 17d | 2020-06-01 | 2020-06-23 | 20, 22 | 0d | finish no earlier than 2020-06-03 |
| 30 |  | 界面设计方案调整 | 3d | 2020-06-11 | 2020-06-15 | 27 | 1d |  |
| 31 |  | 前端页面实现 | 5d | 2020-06-16 | 2020-06-22 | 30 | 1d |  |
| 32 |  | 系统安全性检查与修正 | 10d | 2020-06-08 | 2020-06-19 | 26 | 7d |  |
| 33 |  | α版本整合 | 3d? | 2020-06-24 | 2020-06-26 | 28, 29, 30, 31 | 0d |  |
| 34 |  | 需求核验 | 2d | 2020-06-29 | 2020-06-30 | 33 | 0d |  |
| 35 | 4 | **项目测试阶段** | 30d | 2020-07-01 | 2020-08-11 | 8 | 0d |  |
| 36 |  | 单元测试 | 9d | 2020-07-01 | 2020-07-13 |  | 0d | start no earlier than 2020-07-01 |
| 37 |  | 集成测试 | 11d | 2020-07-14 | 2020-07-28 | 36 | 0d |  |
| 38 |  | 测试规格说明书撰写 | 10d | 2020-07-29 | 2020-08-11 | 37 | 0d |  |
| 39 |  | 系统使用说明书撰写 | 20d | 2020-07-01 | 2020-07-28 |  | 10d | start no earlier than 2020-07-01 |
| 40 |  | 界面设计方案最终版 | 5d | 2020-07-01 | 2020-07-07 |  | 25d |  |
| 41 |  | 数据库设计方案最终版 | 5d | 2020-07-01 | 2020-07-07 |  | 25d |  |
| 42 | 5 | **项目验收阶段** | 24d? | 2020-08-12 | 2020-09-14 | 35 | 0d |  |
| 43 |  | 验收测试 | 13d | 2020-08-12 | 2020-08-28 |  | 0d |  |
| 44 |  | 需求确认 | 3d | 2020-08-31 | 2020-09-02 | 43 | 0d |  |
| 45 |  | 文档确认 | 3d | 2020-09-03 | 2020-09-07 | 44 | 0d |  |
| 46 |  | 产品试运行 | 5d | 2020-09-08 | 2020-09-14 | 45 | 0d |  |
| 47 |  | 产品验收完成 | 1d? | 2020-08-31 | 2020-08-31 |  | 0d | must finish on 2020-08-31 |

## Version 2 (saved 2020-04-17)

Note of the change: v1.0.3

Last finish stays 2020-09-14.

Added:

| ID | Task | Duration | Start | Finish | Predecessors | Resources |
| --- | --- | --- | --- | --- | --- | --- |
| 13 | 移动端开发 | 15d | 2020-04-06 | 2020-04-24 | 9 | 后端开发工程师 [35%]; 开发设备 |

Changed:

| ID | Task | Predecessors | Other |
| --- | --- | --- | --- |
| 12 | 用户子系统实现 |  | resources 后端开发工程师 [50%]; 开发设备 → 后端开发工程师 [35%]; 开发设备 |
| 14 | 数据存储子系统实现 |  | resources 后端开发工程师 [50%]; 开发设备 → 后端开发工程师 [30%]; 开发设备 |
| 18 | 原型整合校对 | 10, 11, 12, 14, 15 → 10, 11, 12, 14, 15, 13 |  |
